# kc5014_assessment

Schedule from MS Project, 2021-11-01 to 2022-06-10, costs in £.

## Calendars

- Standard: Mon-Fri 08:00-12:00, 13:00-17:00; Sat-Sun off. Exceptions (off unless hours are given): 2021-12-27 (Christmas Day Bank Holiday), 2021-12-28 (Boxing Day Bank Holiday), 2022-01-03 (New Year's Day Bank Holiday).

## Resources

| Resource | Group | Rate |
| --- | --- | --- |
| Elliot Vipond | Project Management | 30 |
| Darren Samuels | Business Analysis | 20 |
| Garland Warren | SW Development | 25 |
| Karrie Blue | Data Analytics | 17.5 |
| Gillian Hunter | Project Management | 20 |
| Drake Leavitt | Design | 20 |
| Nadia Elliston | Human Resources | 20 |
| Haze Ashworth | Process Analytics | 20 |
| Jorie Sawyer | Design | 20 |
| Charlie Tanner | Testing | 22.5 |
| Ronnette Willey | SW Development | 25 |
| Louella Irvine | SW Development | 25 |
| Irma Cross | Human Resources | 20 |
| Tennyson Seward | Cyber Security | 25 |
| Cara Harman | Networking | 21.5 |
| Livia Bennett | IT | 20 |
| Vince Rennold | Sales and Purchasing | 20.5 |
| Seanna Waller | Legal |  |
| Harland Solomon | Public Relations |  |
| Pattinson - Commercial | Real Estate |  |
| Naylors Gavin Black LLP | Real Estate |  |
| Knight Frank | Real Estate |  |
| CBRE | Real Estate |  |

## Schedule

| ID | WBS | Task | Duration | Start | Finish | Predecessors | Total slack | Free slack | Resources | Work | Cost |
| --- | --- | --- | --- | --- | --- | --- | --- | --- | --- | --- | --- |
| 1 | 1 | **Peter´s Pharmacy Central Warehouse Project** | 157d | 2021-11-01 | 2022-06-10 |  | 0d |  |  | 2784h | 60,963 |
| 2 | 1.1 | **Preparation** | 44d | 2021-11-01 | 2022-01-04 |  | 32d | 0d |  | 1158h | 24,845 |
| 3 | 1.1.1 | **Project management** | 6d | 2021-11-01 | 2021-11-08 |  | 32d | 0d |  | 48h | 1,440 |
| 4 | 1.1.1.1 | Project start/kickoff | 1d | 2021-11-01 | 2021-11-01 |  | 32d | 0d | Elliot Vipond | 8h | 240 |
| 5 | 1.1.1.2 | Requirements gathering | 5d | 2021-11-02 | 2021-11-08 | 4 | 32d |  | Elliot Vipond | 40h | 1,200 |
| 6 | 1.1.2 | **Distribution Network** | 4.5d | 2021-11-09 | 2021-11-15 | 3 | 65.5d |  |  | 36h | 850 |
| 7 | 1.1.2.1 | Calculate how much stock will have to be delivered to each pharmacy on daily basis | 1.5d | 2021-11-09 | 2021-11-10 |  | 65.5d | 0d | Karrie Blue | 12h | 210 |
| 8 | 1.1.2.2 | Check if we will have enough capacity in our current distribution network | 2d | 2021-11-10 | 2021-11-12 | 7 | 65.5d | 0d | Elliot Vipond | 16h | 480 |
| 9 | 1.1.2.3 | Enquire prices of new vans for delivery if they are needed | 1d | 2021-11-12 | 2021-11-15 | 8 | 65.5d |  | Darren Samuels | 8h | 160 |
| 10 | 1.1.3 | **Server HW** | 34d | 2021-11-09 | 2021-12-24 | 3 | 36d |  |  | 88h | 1,972 |
| 11 | 1.1.3.1 | Work out the HW specs needed to run the software | 1d | 2021-12-20 | 2021-12-20 | 39, 41 | 36d | 0d | Livia Bennett | 8h | 160 |
| 12 | 1.1.3.2 | Get prices for the server HW | 2d | 2021-12-21 | 2021-12-22 | 11, 33 | 36d | 0d | Vince Rennold | 16h | 328 |
| 13 | 1.1.3.3 | Make a decision as to where the server will be housed | 1d | 2021-11-16 | 2021-11-16 | 30 | 60.5d | 0d | Elliot Vipond | 8h | 240 |
| 14 | 1.1.3.4 | Check that the infrastructure is strong enough to house a server (internet, electricity) | 1.5d | 2021-11-17 | 2021-11-18 | 13 | 60.5d | 24.5d | Livia Bennett | 12h | 240 |
| 15 | 1.1.3.5 | Check current staff capabilities to build and manage a server | 0.5d | 2021-11-09 | 2021-11-09 |  | 67.5d | 31.5d | Elliot Vipond | 4h | 120 |
| 16 | 1.1.3.6 | Finish calculations of costs for in-house server hosting | 1d | 2021-12-23 | 2021-12-23 | 12, 13, 14, 15 | 36d | 0d | Vince Rennold | 8h | 164 |
| 17 | 1.1.3.7 | Research cloud server providers | 2d | 2021-12-21 | 2021-12-22 | 11 | 37d | 1d | Livia Bennett | 16h | 320 |
| 18 | 1.1.3.8 | Create a document comparing cloud hosting providers vs in-house server | 1d | 2021-12-24 | 2021-12-24 | 16, 17 | 36d | 5d | Livia Bennett; Elliot Vipond | 16h | 400 |
| 19 | 1.1.4 | **Central Warehouse** | 13d | 2021-11-09 | 2021-11-25 | 3 | 57d |  |  | 240h | 4,288 |
| 20 | 1.1.4.1 | Research companies assets to check if we have a warehouse-suitable building | 1d | 2021-11-09 | 2021-11-09 |  | 57d | 0d | Darren Samuels | 8h | 160 |
| 21 | 1.1.4.2 | Research laws on how this type of stock needs to be secured | 3d | 2021-11-09 | 2021-11-11 |  | 59d | 0d | Seanna Waller | 24h |  |
| 22 | 1.1.4.3 | Research pricing on site providers | 2d | 2021-11-10 | 2021-11-11 | 20 | 64d | 0d | Vince Rennold | 16h | 328 |
| 23 | 1.1.4.4 | Check if site providers also provide security / allow our own security on property | 2d | 2021-11-12 | 2021-11-16 | 22, 21 | 64d |  | Darren Samuels | 16h | 320 |
| 24 | 1.1.4.5 | Research security companies that have a licence for securing this type of stock | 4d | 2021-11-12 | 2021-11-18 | 21 | 59d | 0d | Seanna Waller; Darren Samuels | 32h | 320 |
| 25 | 1.1.4.6 | Research some possible lands where we might build our own warehouse | 5d | 2021-11-12 | 2021-11-18 | 20 | 57d | 0d | Vince Rennold | 40h | 820 |
| 26 | 1.1.4.7 | Enquire some companies that specialize in building warehouses how much it would cost to build warehouses | 5d | 2021-11-19 | 2021-11-25 | 25 | 57d |  | Vince Rennold; Darren Samuels | 80h | 1,620 |
| 27 | 1.1.4.8 | Prepare a comparison that compares building our warehouse or renting it | 3d | 2021-11-19 | 2021-11-23 | 22, 24 | 59d |  | Elliot Vipond | 24h | 720 |

| ID | WBS | Task | Duration | Start | Finish | Predecessors | Total slack | Free slack | Resources | Work | Cost |
| --- | --- | --- | --- | --- | --- | --- | --- | --- | --- | --- | --- |
| 28 | 1.1.5 | **Central IT department** | 13d | 2021-11-09 | 2021-11-26 | 3 | 56.5d |  |  | 80h | 2,000 |
| 29 | 1.1.5.1 | Go over current IT staff qualifications and experience | 5.5d | 2021-11-18 | 2021-11-26 | 32 | 56.5d |  | Nadia Elliston; Elliot Vipond | 48h | 1,200 |
| 30 | 1.1.5.2 | Research company assets to figure out if we need new offices or server room | 3.5d | 2021-11-09 | 2021-11-15 |  | 60.5d | 0d | Elliot Vipond; Darren Samuels | 32h | 800 |
| 31 | 1.1.6 | **Current IT status** | 27d | 2021-11-09 | 2021-12-15 | 3 | 42d |  |  | 92h | 2,008 |
| 32 | 1.1.6.1 | Get information about IT employees' abilities | 4d | 2021-11-09 | 2021-11-18 |  | 56.5d | 0d | Livia Bennett; Elliot Vipond | 32h | 800 |
| 33 | 1.1.6.2 | Research HW status at HQ | 1.5d | 2021-11-15 | 2021-11-16 |  | 60.5d | 24.5d | Livia Bennett | 12h | 240 |
| 34 | 1.1.6.3 | Research HW status in pharmacies (endpoint machines) | 3d | 2021-11-18 | 2021-11-24 | 35 | 42d | 0d | Livia Bennett | 24h | 480 |
| 35 | 1.1.6.4 | Sum up HW requirements for endpoint machines in pharmacies | 1d | 2021-11-12 | 2021-11-12 |  | 42d | 0d | Livia Bennett | 8h | 160 |
| 36 | 1.1.6.5 | Get prices for endpoint machines for pharmacies that don´t have any IT equipment or need it upgraded | 2d | 2021-12-14 | 2021-12-15 | 34 | 42d | 12d | Vince Rennold | 16h | 328 |
| 37 | 1.1.7 | **SW** | 33d | 2021-11-16 | 2022-01-04 | 3 | 32d |  |  | 170h | 3,365 |
| 38 | 1.1.7.1 | Go over the business requirements to figure out what the best system is for this use-case | 15d | 2021-11-16 | 2021-12-13 | 46 | 32d | 0d | Darren Samuels [25%]; Karrie Blue [25%]; Harland Solomon [25%]; Elliot Vipond [25%] | 42h | 765 |
| 39 | 1.1.7.2 | Select SW solution that will cover all business needs | 2d | 2021-12-14 | 2021-12-15 | 38 | 32d | 0d | Darren Samuels | 16h | 320 |
| 40 | 1.1.7.3 | Negotiate pricing of ERP licences | 5d | 2021-12-16 | 2021-12-29 | 39 | 35d | 4d | Vince Rennold | 40h | 820 |
| 41 | 1.1.7.4 | Server OS selection | 2d | 2021-12-16 | 2021-12-17 | 39 | 32d | 0d | Livia Bennett | 16h | 320 |
| 42 | 1.1.7.5 | Figure out OS pricing for the server | 3d | 2021-12-30 | 2022-01-04 | 41 | 32d | 1d | Vince Rennold | 24h | 492 |
| 43 | 1.1.7.6 | Figure out which OS would be most suitable for endpoint machines | 2d | 2021-11-25 | 2021-11-26 | 34 | 53d | 0d | Livia Bennett | 16h | 320 |
| 44 | 1.1.7.7 | Get OS pricing for endpoint machines | 2d | 2021-11-30 | 2021-12-01 | 43 | 53d | 22d | Vince Rennold | 16h | 328 |
| 45 | 1.1.8 | **Business practices/processes** | 31d | 2021-11-09 | 2021-12-21 | 3 | 32d |  |  | 136h | 2,820 |
| 46 | 1.1.8.1 | Research current business processes and how changes might affect them | 5d | 2021-11-09 | 2021-11-15 |  | 32d | 0d | Haze Ashworth | 40h | 800 |
| 47 | 1.1.8.2 | Research what availability of warehouse would be needed so that all branches get supplies on time | 2d | 2021-11-19 | 2021-11-22 | 46 | 36d | 0d | Karrie Blue | 16h | 280 |
| 48 | 1.1.8.3 | Calculate how many warehouse staff is needed | 1d | 2021-12-16 | 2021-12-16 | 47 | 34d | 0d | Darren Samuels | 8h | 160 |
| 49 | 1.1.8.4 | Prepare a report of business processes that would need to get changed | 2d | 2021-12-17 | 2021-12-20 | 46, 48 | 34d | 0d | Haze Ashworth | 16h | 320 |
| 50 | 1.1.8.5 | Present to company execs for approval | 1d | 2021-12-21 | 2021-12-21 | 49 | 39d |  | Elliot Vipond | 8h | 240 |
| 51 | 1.1.8.6 | Research business practices that would need to be implemented into endpoint interface | 6d | 2021-11-16 | 2021-11-30 |  | 54d |  | Darren Samuels [50%]; Haze Ashworth [50%] | 24h | 480 |
| 52 | 1.1.8.7 | Create a basic breakdown of the endpoint interface | 3d | 2021-11-09 | 2021-12-20 |  | 40.5d | 9.5d | Garland Warren; Darren Samuels | 24h | 540 |

| ID | WBS | Task | Duration | Start | Finish | Predecessors | Total slack | Free slack | Resources | Work | Cost |
| --- | --- | --- | --- | --- | --- | --- | --- | --- | --- | --- | --- |
| 53 | 1.1.9 | **Network** | 9d | 2021-11-01 | 2021-11-11 |  | 67d |  |  | 68h | 1,462 |
| 54 | 1.1.9.1 | Gather list of devices that will connect to the new network | 1.5d | 2021-11-01 | 2021-11-02 |  | 70d | 3d | Cara Harman | 12h | 258 |
| 55 | 1.1.9.2 | Gather network requirements outside of device requirements | 2.5d | 2021-11-03 | 2021-11-05 |  | 67d | 0d | Cara Harman | 20h | 430 |
| 56 | 1.1.9.3 | Collate the two lists of requirements | 0.5d | 2021-11-05 | 2021-11-05 | 54, 55 | 67d | 0d | Cara Harman | 4h | 86 |
| 57 | 1.1.9.4 | Prepare a document outlining the structure of the new network | 2d | 2021-11-10 | 2021-11-11 | 58 | 67d |  | Cara Harman | 16h | 344 |
| 58 | 1.1.9.5 | Prepare a list of devices needed for building the new network | 2d | 2021-11-08 | 2021-11-09 | 56 | 67d | 0d | Cara Harman | 16h | 344 |
| 59 | 1.1.10 | **Training** | 36d | 2021-11-09 | 2021-12-30 | 3 | 34d |  |  | 88h | 1,760 |
| 60 | 1.1.10.1 | Figure out what level of technology skills do people in individual branches have (set a baseline) | 5d | 2021-11-09 | 2021-11-15 |  | 62d | 28d | Nadia Elliston | 40h | 800 |
| 61 | 1.1.10.2 | Get a list of tasks that pharmacists would have to do with the new system | 3d | 2021-12-21 | 2021-12-23 | 49, 39 | 34d | 0d | Haze Ashworth | 24h | 480 |
| 62 | 1.1.10.3 | Create a basic training breakdown structure and check it´s manageable to put employees through this training | 3d | 2021-12-24 | 2021-12-30 | 61, 60 | 34d |  | Nadia Elliston | 24h | 480 |
| 63 | 1.1.11 | **Testing** | 22.5d | 2021-11-09 | 2021-12-09 | 3 | 47.5d |  |  | 112h | 2,880 |
| 64 | 1.1.11.1 | Plan what would need to be tested | 3d | 2021-11-09 | 2021-11-11 |  | 48d | 0d | Charlie Tanner | 24h | 540 |
| 65 | 1.1.11.2 | Set testing benchmarks & requirements | 1d | 2021-12-01 | 2021-12-02 | 64 | 47.5d | 0d | Elliot Vipond | 8h | 240 |
| 66 | 1.1.11.3 | Document testing procedures/processes | 5d | 2021-12-02 | 2021-12-09 | 64, 65 | 47.5d | 42d | Charlie Tanner; Elliot Vipond | 80h | 2,100 |
| 67 | 1.2 | **Execution** | 106d | 2022-01-05 | 2022-06-01 | 2 | 0d |  |  | 1558h | 34,618 |
| 68 | 1.2.1 | **Project management** | 1d | 2022-01-05 | 2022-01-05 | 2 | 32d | 0d |  | 8h | 240 |
| 69 | 1.2.1.1 | Project initiation | 1d | 2022-01-05 | 2022-01-05 |  | 32d |  | Elliot Vipond | 8h | 240 |
| 70 | 1.2.2 | **SW** | 30d | 2022-01-06 | 2022-02-16 | 68 | 37d |  |  | 496h | 12,292 |
| 71 | 1.2.2.1 | Purchase ERP SW licences | 2d | 2022-01-06 | 2022-01-07 | 40 | 56.5d | 23.5d | Vince Rennold | 16h | 328 |
| 72 | 1.2.2.2 | Purchase/secure OS licences for the server | 0.5d | 2022-01-20 | 2022-01-20 | 42 | 46.5d | 11.5d | Vince Rennold | 4h | 82 |
| 73 | 1.2.2.3 | Purchase/secure OS licences for the endpoint machines | 0.5d | 2022-01-24 | 2022-01-24 | 44 | 30.5d | 0.5d | Vince Rennold | 4h | 82 |
| 74 | 1.2.2.4 | Develop endpoint front-end ready to integrate with SAP | 30d | 2022-01-06 | 2022-02-16 | 52 | 37d | 0d | Garland Warren; Ronnette Willey [50%]; Louella Irvine [50%] | 472h | 11,800 |
| 75 | 1.2.3 | **Sourcing** | 21d | 2022-01-10 | 2022-02-07 | 68 | 30d |  |  | 48h | 984 |
| 76 | 1.2.3.1 | Order endpoint machines | 1.5d | 2022-01-10 | 2022-01-11 | 36 | 30d | 0d | Vince Rennold | 12h | 246 |
| 77 | 1.2.3.2 | Order server HW | 2d | 2022-01-13 | 2022-01-14 | 18 | 35d | 0d | Vince Rennold | 16h | 328 |
| 78 | 1.2.3.3 | Order network equipment | 2.5d | 2022-01-11 | 2022-01-17 | 58 | 82d | 0d | Vince Rennold | 20h | 410 |
| 79 | 1.2.3.4 | Wait for endpoint machines delivery | 10d | 2022-01-11 | 2022-01-25 | 76 | 30d | 0d |  |  |  |
| 80 | 1.2.3.5 | Wait for server HW delivery | 15d | 2022-01-17 | 2022-02-04 | 77 | 35d | 0d |  |  |  |
| 81 | 1.2.3.6 | Wait for network equipment delivery | 15d | 2022-01-18 | 2022-02-07 | 78 | 82d |  |  |  |  |

| ID | WBS | Task | Duration | Start | Finish | Predecessors | Total slack | Free slack | Resources | Work | Cost |
| --- | --- | --- | --- | --- | --- | --- | --- | --- | --- | --- | --- |
| 82 | 1.2.4 | **HW** | 19d | 2022-01-25 | 2022-02-21 | 68 | 30d |  |  | 148h | 3,040 |
| 83 | 1.2.4.1 | Install server | 1.5d | 2022-02-09 | 2022-02-10 | 80, 72 | 33d | 0d | Livia Bennett | 12h | 240 |
| 84 | 1.2.4.2 | Install endpoint machines in individual pharmacies | 15d | 2022-01-25 | 2022-02-17 | 73, 79 | 30d | 0d | Livia Bennett | 120h | 2,400 |
| 85 | 1.2.4.3 | Document server building procedures for later troubleshooting | 3d | 2022-02-10 | 2022-02-21 | 83 | 72.5d |  | Livia Bennett [50%]; Elliot Vipond [50%] | 16h | 400 |
| 86 | 1.2.5 | **Network** | 47d | 2022-01-05 | 2022-03-10 |  | 59d |  |  | 110h | 2,450 |
| 87 | 1.2.5.1 | Build the new network according to specs | 5d | 2022-01-05 | 2022-01-11 |  | 73.5d | 27d | Cara Harman | 40h | 860 |
| 88 | 1.2.5.2 | Connect all the network devices onto the network | 5d | 2022-02-18 | 2022-02-24 | 87, 83, 84 | 46.5d | 0d | Cara Harman | 40h | 860 |
| 89 | 1.2.5.3 | Document the network building process for later reference | 7.5d | 2022-02-25 | 2022-03-10 | 87, 88 | 59d |  | Cara Harman [50%]; Elliot Vipond [50%] | 30h | 730 |
| 90 | 1.2.6 | **Integration** | 38.5d | 2022-01-26 | 2022-03-21 | 68 | 50d |  |  | 268h | 5,922 |
| 91 | 1.2.6.1 | Install selected ERP system onto the server | 5d | 2022-02-18 | 2022-02-28 | 83, 71 | 33d | 0d | Livia Bennett | 40h | 800 |
| 92 | 1.2.6.2 | Configure server network to accept connections from pharmacies | 1d | 2022-02-25 | 2022-02-25 | 84, 83 | 30d | 0d | Cara Harman | 8h | 172 |
| 93 | 1.2.6.3 | Install client SW on endpoint machines so that they can connect to the server | 10d | 2022-02-28 | 2022-03-21 | 84, 92 | 30d | 0d | Livia Bennett | 80h | 1,600 |
| 94 | 1.2.6.4 | Integrate supplier systems into our system that will enable us to order stock automatically | 10d | 2022-02-28 | 2022-03-17 | 100, 91 | 33d | 0d | Garland Warren | 80h | 2,000 |
| 95 | 1.2.6.5 | Set levels of automatic stock ordering from suppliers | 2.5d | 2022-01-26 | 2022-01-28 | 100, 102 | 88.5d |  | Karrie Blue | 20h | 350 |
| 96 | 1.2.6.6 | Integrate the developed endpoint front-end with the SAP | 5d | 2022-02-17 | 2022-03-14 | 74 | 37d | 0d | Garland Warren | 40h | 1,000 |
| 97 | 1.2.7 | **Data analysis & insertion** | 105d | 2022-01-06 | 2022-06-01 | 68 | 0d |  |  | 140h | 2,460 |
| 98 | 1.2.7.1 | Prepare list of data that is needed | 2d | 2022-01-06 | 2022-01-07 |  | 60d | 0d | Karrie Blue | 16h | 280 |
| 99 | 1.2.7.2 | Collect required data from each pharmacy | 7.5d | 2022-01-10 | 2022-01-19 | 98 | 81d | 0d | Karrie Blue | 60h | 1,050 |
| 100 | 1.2.7.3 | Collect supplier information from HQ | 2d | 2022-01-19 | 2022-01-21 | 98 | 59d | 0d | Karrie Blue | 16h | 280 |
| 101 | 1.2.7.4 | Create analysis of what stock is most sough-after and how much stock we need to keep in central warehouse | 2d | 2022-01-21 | 2022-01-25 | 99 | 88.5d | 0d | Karrie Blue | 16h | 280 |
| 102 | 1.2.7.5 | Set levels of auto-ordering for each stock | 0.5d | 2022-01-25 | 2022-01-25 | 101 | 88.5d | 0d | Darren Samuels | 4h | 80 |
| 103 | 1.2.7.6 | Feed data from pharmacies into the new system | 2d | 2022-01-25 | 2022-01-31 | 99, 100 | 79d |  | Karrie Blue | 16h | 280 |
| 104 | 1.2.7.7 | Clean up the data changes done in trial session | 0.5d | 2022-05-31 | 2022-05-31 | 120 | 0d |  | Karrie Blue | 4h | 70 |
| 105 | 1.2.7.8 | Import updated live data | 1d | 2022-06-01 | 2022-06-01 | 104 | 0d |  | Karrie Blue | 8h | 140 |

| ID | WBS | Task | Duration | Start | Finish | Predecessors | Total slack | Free slack | Resources | Work | Cost |
| --- | --- | --- | --- | --- | --- | --- | --- | --- | --- | --- | --- |
| 106 | 1.2.8 | **Business practices/processes** | 17.5d | 2022-01-06 | 2022-01-31 | 68 | 87.5d |  |  | 140h | 2,800 |
| 107 | 1.2.8.1 | Update business processes & bylaws affected by the new system | 15d | 2022-01-06 | 2022-01-26 |  | 87.5d | 0d | Darren Samuels [50%]; Haze Ashworth [50%] | 120h | 2,400 |
| 108 | 1.2.8.2 | Prepare an overview highlighting most important changes | 2.5d | 2022-01-27 | 2022-01-31 | 107 | 87.5d |  | Darren Samuels | 20h | 400 |
| 109 | 1.2.9 | **Testing** | 33.5d | 2022-02-10 | 2022-03-29 | 68 | 30d |  |  | 120h | 2,750 |
| 110 | 1.2.9.1 | Test the custom-developed frontend for bugs | 2.5d | 2022-03-15 | 2022-03-17 | 96 | 37d | 7d | Charlie Tanner | 20h | 450 |
| 111 | 1.2.9.2 | Stress test the HW that it doesn´t crash under heavy load | 2d | 2022-02-10 | 2022-02-14 | 83, 66 | 60d | 30d | Charlie Tanner | 16h | 360 |
| 112 | 1.2.9.3 | Test that all endpoint machines are able to access the server | 5d | 2022-03-21 | 2022-03-28 | 93, 88 | 30d | 0d | Charlie Tanner; Livia Bennett | 44h | 930 |
| 113 | 1.2.9.4 | Test integration with supplier APIs to enable automatic stock ordering | 2d | 2022-03-18 | 2022-03-23 | 94 | 33d | 3d | Charlie Tanner; Garland Warren | 16h | 380 |
| 114 | 1.2.9.5 | Document the testing process and results | 1.5d | 2022-03-28 | 2022-03-29 | 110, 111, 112, 113 | 30d |  | Charlie Tanner; Elliot Vipond | 24h | 630 |
| 115 | 1.2.10 | **Training** | 14.5d | 2022-05-11 | 2022-05-31 | 68, 109 | 0d |  |  | 80h | 1,680 |
| 116 | 1.2.10.1 | Produce training documentation based on the breakdown prepared | 5d | 2022-05-11 | 2022-05-17 | 62 | 0d |  | Nadia Elliston | 40h | 800 |
| 117 | 1.2.10.2 | Create a test for the end of the session that employees will have to pass based on the prepared breakdown | 1d | 2022-05-18 | 2022-05-18 | 62 | 1d |  | Nadia Elliston | 8h | 160 |
| 118 | 1.2.10.3 | Have employees take the training course | 2d | 2022-05-18 | 2022-05-19 | 116 | 0d |  |  |  |  |
| 119 | 1.2.10.4 | Have employees pass the test | 1d | 2022-05-20 | 2022-05-20 | 117, 118 | 0d |  |  |  |  |
| 120 | 1.2.10.5 | Guide employees during a trial session of the new system | 4d | 2022-05-23 | 2022-05-31 | 119, 103 | 0d |  | Nadia Elliston; Garland Warren | 32h | 720 |
| 121 | 1.3 | **Monitoring** | 7d | 2022-06-02 | 2022-06-10 | 67 | 0d |  |  | 68h | 1,500 |
| 122 | 1.3.1 | **Project management** | 1d | 2022-06-10 | 2022-06-10 | 124, 126 | 0d |  |  | 8h | 240 |
| 123 | 1.3.1.1 | Project closure | 1d | 2022-06-10 | 2022-06-10 |  | 0d |  | Elliot Vipond | 8h | 240 |
| 124 | 1.3.2 | **HW** | 3d | 2022-06-02 | 2022-06-07 |  | 2.5d |  |  | 12h | 240 |
| 125 | 1.3.2.1 | Set up alerts in case HW usage goes over allowed limit | 1.5d | 2022-06-02 | 2022-06-07 |  | 2.5d |  | Livia Bennett | 12h | 240 |
| 126 | 1.3.3 | **Network** | 6d | 2022-06-02 | 2022-06-09 |  | 0d |  |  | 48h | 1,020 |
| 127 | 1.3.3.1 | Set up tests on endpoints that will automatically send notifications to IT team in case server is not reachable | 1.5d | 2022-06-02 | 2022-06-03 |  | 4.5d |  | Garland Warren | 12h | 300 |
| 128 | 1.3.3.2 | Set up tests on server in case there is suspiciously increasing traffic (might mean a hack attempt) | 1.5d | 2022-06-06 | 2022-06-08 |  | 1d |  | Livia Bennett | 12h | 240 |
| 129 | 1.3.3.3 | Set up tests that check connection to supplier servers for automatic ordering and alert IT staff in case connection is not working | 3d | 2022-06-02 | 2022-06-09 |  | 0d |  | Livia Bennett | 24h | 480 |
